# Предварительный план2007

Schedule from MS Project, 2013-04-22 to 2014-05-06.

## Calendars

- Стандартный: Mon-Fri 09:00-13:00, 14:00-18:00; Sat-Sun off. Exceptions (off unless hours are given): 2013-05-01 to 2013-05-05 (Первое мая), 2013-05-09 to 2013-05-12 (Девятое мая).

## Resources

| Resource |
| --- |
| Шилин Роман |
| Аналитик |
| Андрей Пирожков |
| Тугушев Илья |
| Денис Митавский |
| Java разработчик1 |
| Java разработчик2 |
| Валерий Мацукевич |
| Java разработчик3 |
| Java разработчик4 |
| WEB-дизайнер |
| Java разработчик |
| Андрей Цветков |
| Java разработчик5 |
| Тест Аналитик |
| Java разработчик6 |
| Тестировщик |
| Технический писатель |
| Технолог - администратор |
| Технический писатель2 |
| Системный аналитик1 |
| Системный аналитик2 |
| Системный аналитик3 |
| Системный аналитик4 |
| Владимир Панов |
| Сергей Кашанский |
| Роман Митинков |
| Роман |
| Глеб |

## Schedule

| ID | WBS | Task | Type | Duration | Start | Finish | Predecessors | Total slack | Free slack | Constraint | Resources | Work |
| --- | --- | --- | --- | --- | --- | --- | --- | --- | --- | --- | --- | --- |
| 1 | 1 | **Разработка второй версии CM4/5** |  | 267d? | 2013-04-22 | 2014-05-06 |  | 0d |  |  |  | 26809.6h |
| 2 | 1.1 | Принято решение о начале разработки | milestone | 0d | 2013-04-22 | 2013-04-22 |  | 0d |  | start no earlier than 2013-04-22 |  |  |
| 3 | 1.2 | Управление проектом |  | 267d | 2013-04-22 | 2014-05-06 | 2 | 0d |  |  | Шилин Роман | 2136h |
| 4 | 1.3 | Управление требованиями |  | 267d | 2013-04-22 | 2014-05-06 | 2 | 0d |  |  | Аналитик | 2136h |
| 5 | 1.4 | **Создание модуля "Делопроизводство" (документоориентированная среда)** |  | 209d? | 2013-04-22 | 2014-02-13 |  | 36d |  |  |  | 15041.6h |
| 6 | 1.4.1 | Первичные требования для создания модуля "Делопроизводство" подготовлены | milestone | 0d | 2013-04-22 | 2013-04-22 | 2 | 36d | 0d | finish no earlier than 2012-04-02 |  |  |
| 7 | 1.4.2 | **Апробация идей прототипа** |  | 23d | 2013-04-29 | 2013-06-05 |  | 73d |  |  |  | 136h |
| 8 | 1.4.2.1 | Пирожков доступен | milestone | 0d | 2013-05-31 | 2013-05-31 |  | 243d |  | start no earlier than 2013-05-31 |  |  |
| 9 | 1.4.2.2 | Проведение предварительных испытаний системы |  | 9d | 2013-04-29 | 2013-05-16 | 6FS+5d | 149d | 0d |  | Андрей Цветков | 72h |
| 10 | 1.4.2.3 | Описание обработки ВХ. Док. На примере технологий прототипа |  | 8d | 2013-05-20 | 2013-06-05 |  | 63d | 0d | start no earlier than 2013-05-20 | Андрей Пирожков | 64h |
| 11 | 1.4.3 | **Настройка инфраструктуры** |  | 16d | 2013-05-20 | 2013-06-10 | 19 | 69d | 0d |  |  | 96h |
| 12 | 1.4.3.1 | Настройка непрерывной интеграции |  | 4d | 2013-05-20 | 2013-05-23 |  | 102d |  |  | Тугушев Илья | 32h |
| 13 | 1.4.3.2 | Поддержка UNIT-тестирования и интеграционного тестирования на уроне среды непрерывной интеграции |  | 5d | 2013-06-04 | 2013-06-10 |  | 90d |  | start no earlier than 2013-06-04 | Тугушев Илья | 40h |
| 14 | 1.4.3.3 | Репакеджинг проекта |  | 3d | 2013-05-27 | 2013-05-29 |  | 64d | 0d | start no earlier than 2013-05-27 | Сергей Кашанский | 24h |
| 15 | 1.4.4 | **Проектирование и формирование ядра системы** |  | 129d | 2013-04-22 | 2013-10-24 | 6 | 36d | 0d |  |  | 6989.6h |
| 16 | 1.4.4.1 | **Определение структуры модуля Делопроизводство** |  | 25d | 2013-04-22 | 2013-05-31 |  | 36d | 26d |  |  | 372h |
| 17 | 1.4.4.1.1 | Разбивка на слои |  | 5d | 2013-04-22 | 2013-04-26 |  | 36d | 0d |  | Денис Митавский [50%]; Андрей Пирожков [50%] | 40h |
| 18 | 1.4.4.1.2 | Конфигурации, загрузка и инициализация системы в базовой конфигурации |  | 5d | 2013-04-29 | 2013-05-08 | 17 | 36d | 0d |  | Валерий Мацукевич; Денис Митавский [50%] | 60h |
| 19 | 1.4.4.1.3 | Базовая конфигурация объектов системы |  | 5d | 2013-05-13 | 2013-05-17 | 17, 18 | 36d | 0d |  | Денис Митавский [50%]; Валерий Мацукевич | 60h |
| 20 | 1.4.4.1.4 | Юнит-тестирование - базис |  | 6d | 2013-05-17 | 2013-05-24 | 9 | 149d |  |  | Денис Митавский [50%]; Андрей Цветков | 72h |
| 21 | 1.4.4.1.5 | Базовая имплементация слоя DAO |  | 5d | 2013-05-20 | 2013-05-24 | 19 | 36d | 0d |  | Денис Митавский [50%]; Валерий Мацукевич | 60h |
| 22 | 1.4.4.1.6 | Обеспечение программных компонет верификации первой очереди |  | 5d | 2013-05-27 | 2013-05-31 | 21 | 36d | 0d |  | Валерий Мацукевич; Андрей Цветков | 80h |
| 23 | 1.4.4.2 | **DAO** |  | 22d | 2013-06-03 | 2013-07-02 | 21, 22 | 36d |  |  |  | 280h |
| 24 | 1.4.4.2.1 | DAO для бизнес-объектов |  | 7d | 2013-06-03 | 2013-06-11 |  | 36d | 0d |  | Андрей Цветков; Валерий Мацукевич | 112h |
| 25 | 1.4.4.2.2 | DAO для коллекций |  | 9d | 2013-06-12 | 2013-06-24 | 24 | 36d | 0d |  | Андрей Цветков; Валерий Мацукевич | 144h |
| 26 | 1.4.4.2.3 | DAO - утилитарные поля |  | 6d | 2013-06-25 | 2013-07-02 | 25 | 36d | 0d |  | Денис Митавский [50%] | 24h |
| 27 | 1.4.4.3 | CRUD-сервис для бизнес-объектов |  | 10d | 2013-06-25 | 2013-07-08 | 25 | 83d | 0d |  | Андрей Цветков | 80h |
| 28 | 1.4.4.4 | Поддержка отсортированных дочерних бизнес-объектов |  | 5d | 2013-07-09 | 2013-07-15 | 27 | 143d |  |  | Валерий Мацукевич; Андрей Цветков | 80h |

Notes:
- 22: UNIT тестирование в рамках наработанного кода
- 27: - проектирование базового API / - имплементация
- 28: Для отображени и поддержания заданного порядка следования объектов

| ID | WBS | Task | Duration | Start | Finish | Predecessors | Total slack | Free slack | Constraint | Resources | Work |
| --- | --- | --- | --- | --- | --- | --- | --- | --- | --- | --- | --- |
| 29 | 1.4.4.5 | **Встроенный GUI** | 14d | 2013-05-30 | 2013-06-18 |  | 64d |  |  |  | 132h |
| 30 | 1.4.4.5.1 | Базис GUI | 5d | 2013-06-10 | 2013-06-14 |  | 164d |  | start no earlier than 2013-06-10 | Денис Митавский [50%] | 20h |
| 31 | 1.4.4.5.2 | Стилистическая адаптация компонентов GUI | 14d | 2013-05-30 | 2013-06-18 | 14 | 64d | 1d |  | Сергей Кашанский | 112h |
| 32 | 1.4.4.6 | **Права доступа** | 20d | 2013-06-12 | 2013-07-09 |  | 121d | 42d |  |  | 296h |
| 33 | 1.4.4.6.1 | Права - оптимизация хранения | 10d | 2013-06-12 | 2013-06-25 | 24 | 121d | 0d |  | Денис Митавский | 80h |
| 34 | 1.4.4.6.2 | Описание существующими декларативными средствами конфигурации | 8d | 2013-06-26 | 2013-07-05 | 33, 25 | 124d |  |  | Денис Митавский [50%]; Валерий Мацукевич | 96h |
| 35 | 1.4.4.6.3 | Автофильтрация | 10d | 2013-06-26 | 2013-07-09 | 33, 25 | 121d | 0d |  | Денис Митавский [50%]; Роман Митинков | 120h |
| 36 | 1.4.4.7 | **Workflow - интеграция с Activiti** | 30d | 2013-06-06 | 2013-07-17 | 10 | 63d | 0d |  |  | 360h |
| 37 | 1.4.4.7.1 | Проектирование | 10d | 2013-06-06 | 2013-06-19 |  | 63d | 0d |  | Андрей Пирожков [50%]; Сергей Кашанский | 120h |
| 38 | 1.4.4.7.2 | Разработка | 20d | 2013-06-20 | 2013-07-17 | 37, 31 | 63d | 0d |  | Андрей Пирожков [50%]; Сергей Кашанский | 240h |
| 39 | 1.4.4.8 | Наследование/Аспекты | 20d | 2013-06-20 | 2013-07-17 | 37 | 141d |  |  | Андрей Пирожков [50%] | 80h |
| 40 | 1.4.4.9 | **Коллекции** | 26d | 2013-07-18 | 2013-08-22 |  | 70d | 10d |  |  | 348h |
| 41 | 1.4.4.9.1 | Коллекции - конфигурация | 3d | 2013-07-18 | 2013-07-22 | 38 | 70d | 0d |  | Андрей Пирожков | 24h |
| 42 | 1.4.4.9.2 | DAO - язык запросов коллекций | 12d | 2013-07-23 | 2013-08-07 | 41 | 80d | 0d |  | Сергей Кашанский; Андрей Пирожков [50%] | 144h |
| 43 | 1.4.4.9.3 | Сервис получения и получения счетчиков | 6d | 2013-08-08 | 2013-08-15 | 41, 42 | 95d |  |  | Андрей Пирожков [50%]; Сергей Кашанский | 48h |
| 44 | 1.4.4.9.4 | ПКД | 11d | 2013-08-08 | 2013-08-22 | 42 | 80d | 0d |  | Андрей Пирожков [50%]; Сергей Кашанский | 132h |
| 45 | 1.4.4.10 | **Действия** | 18d | 2013-07-23 | 2013-08-15 |  | 70d |  |  |  | 184h |
| 46 | 1.4.4.10.1 | Концепция | 4d | 2013-07-23 | 2013-07-26 | 41 | 70d | 0d |  | Андрей Пирожков [50%] | 16h |
| 47 | 1.4.4.10.2 | Реализация | 14d | 2013-07-29 | 2013-08-15 | 46 | 70d | 0d |  | Роман Митинков; Андрей Пирожков [50%] | 168h |
| 48 | 1.4.4.11 | **Формы встроенного GUI** | 26d | 2013-07-10 | 2013-08-14 |  | 121d |  |  |  | 264h |
| 49 | 1.4.4.11.1 | Конфигурация | 6d | 2013-07-10 | 2013-07-17 | 35 | 121d | 0d |  | Денис Митавский [50%] | 24h |
| 50 | 1.4.4.11.2 | API, сервис получения | 6d | 2013-07-18 | 2013-07-25 | 49 | 121d | 0d |  | Денис Митавский [50%]; Валерий Мацукевич | 72h |
| 51 | 1.4.4.11.3 | DAO форм | 14d | 2013-07-26 | 2013-08-14 | 50 | 121d |  |  | Денис Митавский [50%]; Валерий Мацукевич | 168h |
| 52 | 1.4.4.12 | **Слой сопряжения GUI CM4** | 53d | 2013-07-03 | 2013-09-13 |  | 36d |  |  |  | 1233.6h |
| 53 | 1.4.4.12.1 | REST-протокол для АРМа - проектирование | 3d | 2013-07-03 | 2013-07-05 | 26 | 36d | 0d |  | Тугушев Илья; Денис Митавский [20%]; Андрей Пирожков [20%] | 33.6h |
| 54 | 1.4.4.12.2 | REST-протокол для АРМа - реализация | 50d | 2013-07-08 | 2013-09-13 | 53 | 36d | 0d |  | Тугушев Илья; Роман; Глеб | 1200h |

Notes:
- 30: (логин, основной экран)
- 31: Верстка
- 33: Права доступа - оптимизация подхода, / подбор других названий сущностей (таблицы) переименовать таблицы и улучшить производительность
- 34: Права доступа - описание существующими декларативными средствами конфигурации / (для автоматического создания таблиц) + / конфигурирование под-запроса для фильтрации - там же
- 35: Права доступа - авто-фильтрация / + "внедрение в под-запросы"
- 36: Задачи: / - модель процесса (BPMN) / - Имплементация WF - сервиса , взаимодействие системы с Аctiviti
- 39: Архитектура - форма хранения данных (с учетом производительности) / -требуется вернуться к обсуждению
- 42: DAO - язык запросов коллекций
- 43: Коллекции - сервис получения и получения счетчиков
- 44: Для поддержания реализации избранного, отметок о прочтении и т.д.
- 51: получение форм
- 54: Начальная реализация модуля "документооборот"

| ID | WBS | Task | Duration | Start | Finish | Predecessors | Total slack | Free slack | Resources | Work |
| --- | --- | --- | --- | --- | --- | --- | --- | --- | --- | --- |
| 55 | 1.4.4.13 | **Поиск** | 26d | 2013-07-09 | 2013-08-13 | 27 | 83d | 0d |  | 436h |
| 56 | 1.4.4.13.1 | Поиск | 15d | 2013-07-09 | 2013-07-29 |  | 89d | 5d | Денис Митавский [50%]; Андрей Цветков | 180h |
| 57 | 1.4.4.13.2 | Полнотекстовый поиск | 20d | 2013-07-09 | 2013-08-05 |  | 83d | 0d | Java разработчик | 160h |
| 58 | 1.4.4.13.3 | Расширенный поиск | 6d | 2013-08-06 | 2013-08-13 | 56, 57 | 84d | 0d | Денис Митавский; Андрей Цветков | 96h |
| 59 | 1.4.4.14 | **Работа с отчетами** | 23d | 2013-08-23 | 2013-09-24 |  | 82d |  |  | 276h |
| 60 | 1.4.4.14.1 | JDBC-драйвер для системы построения отчётов | 8d | 2013-08-23 | 2013-09-03 | 44 | 82d | 0d | Денис Митавский [50%]; Андрей Цветков | 96h |
| 61 | 1.4.4.14.2 | Интеграция с Jasper Reports | 15d | 2013-09-04 | 2013-09-24 | 60 | 82d | 0d | Денис Митавский [50%]; Андрей Цветков | 180h |
| 62 | 1.4.4.15 | **Компоненты GUI** | 42d | 2013-08-08 | 2013-10-04 |  | 81d | 0d |  | 1040h |
| 63 | 1.4.4.15.1 | GUI - архитектура активностей/дочерних активностей | 10d | 2013-08-08 | 2013-08-21 | 42, 57 | 81d | 0d | Денис Митавский [50%] | 40h |
| 64 | 1.4.4.15.2 | GUI - панель навигации | 10d | 2013-08-23 | 2013-09-05 | 44, 63 | 80d | 0d | Денис Митавский [50%]; Java разработчик | 120h |
| 65 | 1.4.4.15.3 | GUI - отображение коллекций активность | 10d | 2013-08-22 | 2013-09-04 | 63 | 104d |  | Тугушев Илья [50%]; Роман | 120h |
| 66 | 1.4.4.15.4 | GUI - отображение отчётов | 8d | 2013-09-25 | 2013-10-04 | 63, 61 | 82d |  | Андрей Цветков | 64h |
| 67 | 1.4.4.15.5 | GUI - действия | 10d | 2013-08-22 | 2013-09-04 | 63 | 104d |  | Тугушев Илья [50%]; Глеб | 120h |
| 68 | 1.4.4.15.6 | GUI - конфигурируемые формы проектирование | 3d | 2013-08-14 | 2013-08-16 | 58 | 84d | 0d | Денис Митавский [50%] | 12h |
| 69 | 1.4.4.15.7 | GUI - конфигурируемые формы реализация | 8d | 2013-08-19 | 2013-08-28 | 68 | 84d | 0d | Валерий Мацукевич | 64h |
| 70 | 1.4.4.15.8 | GUI - виджеты разработка (базовый набор) | 25d | 2013-08-29 | 2013-10-02 | 69 | 84d |  | Тугушев Илья [50%]; Роман; Глеб | 500h |
| 71 | 1.4.4.16 | Тестирование производительности | 25d | 2013-09-06 | 2013-10-10 | 32, 27, 40, 64, 69 | 80d |  | Денис Митавский; Валерий Мацукевич | 400h |
| 72 | 1.4.4.17 | Версионность/аудит | 8d | 2013-08-16 | 2013-08-27 | 27, 47 | 70d | 0d | Андрей Пирожков; Сергей Кашанский | 128h |
| 73 | 1.4.4.18 | Блокировки бизнес-объектов | 6d | 2013-08-28 | 2013-09-04 | 72 | 70d | 0d | Андрей Пирожков; Сергей Кашанский | 96h |
| 74 | 1.4.4.19 | Описание структуры модуля " Делопроизводство" | 30d | 2013-07-09 | 2013-08-19 | 16, 11, 55SS | 118d |  | Владимир Панов | 240h |
| 75 | 1.4.4.20 | Уточнение состава и сроков работ | 2d | 2013-10-07 | 2013-10-08 | 62 | 82d |  | Андрей Пирожков; Денис Митавский; Тугушев Илья | 48h |
| 76 | 1.4.4.21 | Кросс-СУБД, поддержка Oracle | 15d | 2013-09-05 | 2013-09-25 | 73 | 70d | 0d | Роман Митинков | 120h |
| 77 | 1.4.4.22 | SQL-trace | 5d | 2013-09-26 | 2013-10-02 | 76 | 71d | 0d | Java разработчик | 40h |
| 78 | 1.4.4.23 | Локализация (на уровне конфигурации) | 15d | 2013-10-03 | 2013-10-23 | 77 | 71d |  | Java разработчик | 120h |

Notes:
- 57: Включая взаимодействие с Solr
- 58: C учетом релевантности и оптимизации по объедененеию поисков аттрибутивного и полнотекстового
- 60: Используя язык запросов коллеций
- 64: Отображение и конфигурация + API для получения
- 65: отображающая коллекцию должна иметь возможность быть сконфигурированной так, чтобы мэппить значения некоторых колонок в картинки
- 71: - полноценное, продуманное, конфигурируемое, полностью автоматизированное (вплоть до промежуточного сбора статистики в СУБД перед запуском тестов производительности) с автоматической генерацией таблиц и графиков, с поддержкой нагружающих потоков и т.п.
- 72: История модификации объекта / Версионность - на бизнес слой
- 76: Кросс-СУБД, поддержка Oracle
- 78: Поддержка ресурсных файлов - в расках конфигурирования ресурсных файлов / Подмена языка в интерфейсе (передача локали пользоввателю) -

| ID | WBS | Task | Duration | Start | Finish | Predecessors | Total slack | Free slack | Resources | Work |
| --- | --- | --- | --- | --- | --- | --- | --- | --- | --- | --- |
| 79 | 1.4.4.24 | **Расширение функций сервиса конфигурации** | 21d | 2013-09-26 | 2013-10-24 | 63, 76 | 70d |  |  | 336h |
| 80 | 1.4.4.24.1 | Точки расширения | 5d | 2013-09-26 | 2013-10-02 | 21 | 70d | 0d | Андрей Пирожков; Роман Митинков | 80h |
| 81 | 1.4.4.24.2 | Изменение и дополнение конфигурации системы | 16d | 2013-10-03 | 2013-10-24 | 80 | 70d |  | Андрей Пирожков; Роман Митинков | 256h |
| 82 | 1.4.5 | **Разработка** | 138d | 2013-06-11 | 2013-12-19 | 11 | 90d |  |  | 4596h |
| 83 | 1.4.5.1 | Контроль и корректировка технических решений "Архитектурный комитет" | 103d | 2013-06-11 | 2013-10-31 |  | 133d |  | Тугушев Илья [20%]; Андрей Пирожков [20%]; Денис Митавский [20%]; WEB-дизайнер [20%]; Аналитик [20%]; Владимир Панов [50%] | 1236h |
| 84 | 1.4.5.2 | **Разработка серверной логики модуля Делопроизводство** | 40d | 2013-07-18 | 2013-09-11 | 11, 36 | 63d |  |  | 1600h |
| 85 | 1.4.5.2.1 | Разработка схем документов модуля Делопроизводство | 20d | 2013-07-18 | 2013-08-14 |  | 63d | 0d | Java разработчик2; Java разработчик | 320h |
| 86 | 1.4.5.2.2 | Разработка ЖЦ процессов модуля (WF) | 20d | 2013-08-15 | 2013-09-11 | 85 | 169d |  | Java разработчик2; Java разработчик | 320h |
| 87 | 1.4.5.2.3 | Разработка логики бизнес- действий модуля "Делопроизводство" | 40d | 2013-07-18 | 2013-09-11 |  | 169d |  | Java разработчик1; Java разработчик | 640h |
| 88 | 1.4.5.2.4 | Разработка процессов автоматизации для модуля "Делопроизводство" | 20d | 2013-07-18 | 2013-08-14 |  | 189d |  | Java разработчик | 160h |
| 89 | 1.4.5.2.5 | Разработка модели прав доступа (контекстные роли) | 20d | 2013-08-15 | 2013-09-11 | 85 | 169d |  | Java разработчик | 160h |
| 90 | 1.4.5.3 | **Разработка клиентской логики модуля "Делопроизводство"** | 10d | 2013-09-16 | 2013-09-27 | 54 | 36d | 0d |  | 160h |
| 91 | 1.4.5.3.1 | Разработка форм для работы с документами в GUI (настройки форм) | 5d | 2013-09-16 | 2013-09-20 |  | 36d | 0d | Java разработчик3 | 40h |
| 92 | 1.4.5.3.2 | Разработка структуры рабочего места | 5d | 2013-09-23 | 2013-09-27 | 85, 91 | 36d |  | Java разработчик3 | 40h |
| 93 | 1.4.5.3.3 | Разработка специфичных для модуля форм элементов GUI | 10d | 2013-09-16 | 2013-09-27 |  | 36d |  | Java разработчик4 | 80h |
| 94 | 1.4.5.4 | **Подготовка работы со списками значений** | 40d | 2013-09-30 | 2013-11-22 |  | 117d |  |  | 640h |
| 95 | 1.4.5.4.1 | Разработка функционала учета организационно штатной структуры | 40d | 2013-09-30 | 2013-11-22 | 90 | 117d |  | Андрей Цветков | 320h |
| 96 | 1.4.5.4.2 | Разработка функционала с рубрикаторами (сложные справочники) | 20d | 2013-09-30 | 2013-10-25 | 90 | 117d | 0d | Валерий Мацукевич | 160h |
| 97 | 1.4.5.4.3 | Разработка функционала для работы с словарями данных (простые, линейные справочники) | 20d | 2013-10-28 | 2013-11-22 | 96 | 117d |  | Валерий Мацукевич | 160h |
| 98 | 1.4.5.5 | Подготовка отчетов | 40d | 2013-10-25 | 2013-12-19 | 15, 85 | 98d |  | Java разработчик; Java разработчик1; Java разработчик2 | 960h |
| 99 | 1.4.6 | **Тестирование** | 68d? | 2013-10-25 | 2014-01-28 | 15 | 70d | 0d |  | 2584h |
| 100 | 1.4.6.1 | **Функциональное тестирование** | 53d? | 2013-10-25 | 2014-01-07 |  | 70d |  |  | 2024h |
| 101 | 1.4.6.1.1 | Подготовка ПМИ | 5d | 2013-10-25 | 2013-10-31 |  | 70d | 0d | Тест Аналитик | 40h |
| 102 | 1.4.6.1.2 | Разработка "сценариев тестирования" | 15d | 2013-10-25 | 2013-11-14 |  | 70d | 0d | Тест Аналитик | 120h |
| 103 | 1.4.6.1.3 | Разработка модели нагрузки для тестирования | 10d | 2013-11-01 | 2013-11-14 | 101 | 70d | 0d | Тест Аналитик | 80h |

Notes:
- 80: перенос идеи из прототипа

| ID | WBS | Task | Type | Duration | Start | Finish | Predecessors | Total slack | Free slack | Constraint | Resources | Work |
| --- | --- | --- | --- | --- | --- | --- | --- | --- | --- | --- | --- | --- |
| 104 | 1.4.6.1.4 | **Проведение тестирования** |  | 38d? | 2013-11-15 | 2014-01-07 | 102, 103 | 70d | 0d |  |  | 1784h |
| 105 | 1.4.6.1.4.1 | **Подготовка среды тестирования** |  | 15d? | 2013-11-15 | 2013-12-05 |  | 70d |  |  |  | 200h |
| 106 | 1.4.6.1.4.1.1 | Разворачивание системы |  | 5d? | 2013-11-15 | 2013-11-21 |  | 70d | 0d |  | Java разработчик | 40h |
| 107 | 1.4.6.1.4.1.2 | Наполнение данными |  | 10d? | 2013-11-22 | 2013-12-05 | 106 | 70d | 0d |  | Java разработчик; Java разработчик6 | 160h |
| 108 | 1.4.6.1.4.2 | Среда тестирования готова | milestone | 0d | 2013-12-05 | 2013-12-05 | 107 | 70d | 0d | start no earlier than 2012-05-24 |  |  |
| 109 | 1.4.6.1.4.3 | Проведение тестирования |  | 10d | 2013-12-06 | 2013-12-19 | 108 | 70d | 0d |  | Тест Аналитик; Тестировщик [200%] | 240h |
| 110 | 1.4.6.1.4.4 | **Обработка результатов тестирования и внесение изменений в модуль** |  | 15d | 2013-12-18 | 2014-01-07 | 109FS-2d | 70d |  |  |  | 1344h |
| 111 | 1.4.6.1.4.4.1 | Устранение замечаний по результатам функционального тестирования |  | 15d | 2013-12-18 | 2014-01-07 |  | 70d | 0d |  | Java разработчик5; Java разработчик [300%]; Валерий Мацукевич; Java разработчик3; Java разработчик4; Java разработчик2; Java разработчик1; Андрей Цветков | 1200h |
| 112 | 1.4.6.1.4.4.2 | Проверка устранения замечаний |  | 6d | 2013-12-31 | 2014-01-07 | 111FS-6d | 70d | 0d |  | Тест Аналитик; Тестировщик [200%] | 144h |
| 113 | 1.4.6.2 | **Нагрузочное тестирование** |  | 63d | 2013-11-01 | 2014-01-28 | 101 | 70d |  |  |  | 560h |
| 114 | 1.4.6.2.1 | Адаптация автоматизированных сценариев от СМ4 для создания нагрузки |  | 30d | 2013-11-01 | 2013-12-12 |  | 88d | 18d |  | Java разработчик | 240h |
| 115 | 1.4.6.2.2 | Стенд для нагрузочного тестирования подготовлен | milestone | 0d | 2013-12-19 | 2013-12-19 | 109 | 83d | 13d | finish no earlier than 2012-06-09 |  |  |
| 116 | 1.4.6.2.3 | Проведения нагрузочного тестирования |  | 10d | 2014-01-08 | 2014-01-21 | 112, 114, 115 | 70d | 0d |  | Java разработчик; Тест Аналитик; Тестировщик | 240h |
| 117 | 1.4.6.2.4 | Обработка результатов нагрузочного тестирования |  | 5d | 2014-01-22 | 2014-01-28 | 116 | 70d |  |  | Тест Аналитик; Тестировщик | 80h |
| 118 | 1.4.7 | Разработка модуля "Делопроизводство" завершена | milestone | 0d | 2014-01-28 | 2014-01-28 | 99 | 70d |  |  |  |  |
| 119 | 1.4.8 | **Подготовка документации** |  | 80d | 2013-10-25 | 2014-02-13 | 99SS | 58d |  |  |  | 640h |
| 120 | 1.4.8.1 | Разработка документа "Концепция системы " |  | 40d | 2013-10-25 | 2013-12-19 |  | 58d | 0d |  | Владимир Панов | 320h |
| 121 | 1.4.8.2 | Разработка "Software Architecture Document" |  | 40d | 2013-12-20 | 2014-02-13 | 120 | 58d | 0d |  | Владимир Панов | 320h |
| 122 | 1.4.8.3 | Документы подготовлены | milestone | 0d | 2014-02-13 | 2014-02-13 | 121 | 58d |  |  |  |  |
| 123 | 1.5 | **Проверка работоспособности решения - Организация демонстрации** |  | 25d? | 2013-11-15 | 2013-12-19 | 104SS | 98d |  |  |  | 448h |
| 124 | 1.5.1 | Подготовка стенда |  | 3d | 2013-11-15 | 2013-11-19 | 125SF | 120d |  |  | Java разработчик; Аналитик | 48h |
| 125 | 1.5.2 | Подготовка прототипа |  | 20d? | 2013-11-15 | 2013-12-12 |  | 98d | 0d |  | Java разработчик; Аналитик | 320h |
| 126 | 1.5.3 | Проведение демонстраций |  | 3d | 2013-12-13 | 2013-12-17 | 125 | 98d | 0d |  | Java разработчик; Аналитик | 48h |
| 127 | 1.5.4 | Анализ результатов - выводы |  | 2d | 2013-12-18 | 2013-12-19 | 126 | 98d |  |  | Java разработчик; Аналитик | 32h |

| ID | WBS | Task | Type | Duration | Start | Finish | Predecessors | Total slack | Free slack | Constraint | Resources | Work |
| --- | --- | --- | --- | --- | --- | --- | --- | --- | --- | --- | --- | --- |
| 128 | 1.6 | **Создание модулей первой очереди** |  | 111d? | 2013-10-11 | 2014-03-17 |  | 36d |  |  |  | 7048h |
| 129 | 1.6.1 | Определен состав модулей первой очереди и первичные требования подготовлены | milestone | 0d | 2013-10-11 | 2013-10-11 | 90FS+10d | 36d | 0d | finish no earlier than 2012-04-02 |  |  |
| 130 | 1.6.2 | **Проектирование** |  | 15.67d | 2013-10-14 | 2013-11-04 | 129 | 36d | 0d |  |  | 480h |
| 131 | 1.6.2.1 | Определение структуры модулей первой очереди |  | 13d | 2013-10-14 | 2013-10-30 |  | 36d | 0d |  | Андрей Пирожков; Тугушев Илья; Денис Митавский; WEB-дизайнер | 416h |
| 132 | 1.6.2.2 | Уточнение состава и сроков работ |  | 2.67d | 2013-10-31 | 2013-11-04 | 131 | 53.33d |  |  | Тугушев Илья; Андрей Пирожков; Денис Митавский | 64h |
| 133 | 1.6.3 | Принято решение о разработке модулей второй очереди | milestone | 0d | 2013-10-30 | 2013-10-30 | 131 | 36d | 0d | finish no earlier than 2012-05-21 |  |  |
| 134 | 1.6.4 | **Разработка** |  | 40d | 2013-10-31 | 2013-12-25 | 133 | 36d |  |  |  | 3760h |
| 135 | 1.6.4.1 | Контроль и корректировка технических решений "Архитектурный комитет" |  | 40d | 2013-10-31 | 2013-12-25 |  | 94d |  |  | Тугушев Илья; Андрей Пирожков; Денис Митавский; WEB-дизайнер | 1280h |
| 136 | 1.6.4.2 | **Разработка серверной логики модулей первой очереди** |  | 40d | 2013-10-31 | 2013-12-25 |  | 36d | 0d |  |  | 1600h |
| 137 | 1.6.4.2.1 | Разработка схем документов для модулей первой очереди |  | 20d | 2013-10-31 | 2013-11-27 |  | 36d | 0d |  | Java разработчик2; Java разработчик | 320h |
| 138 | 1.6.4.2.2 | Разработка ЖЦ процессов (WF) |  | 20d | 2013-11-28 | 2013-12-25 | 137 | 36d |  |  | Java разработчик2; Java разработчик | 320h |
| 139 | 1.6.4.2.3 | Разработка логики бизнес- действий для модулей первой очереди |  | 40d | 2013-10-31 | 2013-12-25 |  | 36d |  |  | Java разработчик1; Java разработчик | 640h |
| 140 | 1.6.4.2.4 | Разработка процессов автоматизации для модулей первой очереди |  | 20d | 2013-10-31 | 2013-11-27 |  | 56d |  |  | Java разработчик | 160h |
| 141 | 1.6.4.2.5 | Разработка модели прав доступа (контекстные роли) |  | 20d | 2013-11-28 | 2013-12-25 | 137 | 36d |  |  | Java разработчик | 160h |
| 142 | 1.6.4.3 | **Разработка клиентской логики модулей первой очереди** |  | 30d | 2013-10-31 | 2013-12-11 |  | 46d | 10d |  |  | 320h |
| 143 | 1.6.4.3.1 | Разработка форм для работы с документами в GUI (настройки форм) |  | 10d | 2013-10-31 | 2013-11-13 |  | 66d |  |  | Java разработчик3 | 80h |
| 144 | 1.6.4.3.2 | Разработка структуры рабочего места |  | 10d | 2013-11-28 | 2013-12-11 | 137 | 46d |  |  | Java разработчик3 | 80h |
| 145 | 1.6.4.3.3 | Разработка специфичных для модуля форм элементов GUI |  | 20d | 2013-10-31 | 2013-11-27 |  | 56d |  |  | Java разработчик4 | 160h |
| 146 | 1.6.4.4 | **Разработка вспомогательного инструментария** |  | 20d | 2013-11-04 | 2013-12-02 |  | 53.33d | 17.33d |  |  | 400h |
| 147 | 1.6.4.4.1 | Построитель форм |  | 10d | 2013-11-04 | 2013-11-18 | 130 | 63.33d |  |  | Андрей Цветков | 80h |
| 148 | 1.6.4.4.2 | Разработка инсталлятора |  | 20d | 2013-11-04 | 2013-12-02 | 130 | 53.33d |  |  | Валерий Мацукевич | 160h |
| 149 | 1.6.4.4.3 | Разработка конфигуратора |  | 10d | 2013-11-04 | 2013-11-18 | 130 | 63.33d |  |  | Java разработчик5; Java разработчик | 160h |
| 150 | 1.6.4.5 | Подготовка отчетов |  | 20d | 2013-10-31 | 2013-11-27 |  | 114d |  |  | Java разработчик | 160h |
| 151 | 1.6.5 | Сборка модулей первой очереди завершена | milestone | 0d | 2013-12-25 | 2013-12-25 | 136, 142, 146 | 36d | 0d |  |  |  |

| ID | WBS | Task | Type | Duration | Start | Finish | Predecessors | Total slack | Free slack | Constraint | Resources | Work |
| --- | --- | --- | --- | --- | --- | --- | --- | --- | --- | --- | --- | --- |
| 152 | 1.6.6 | **Тестирование** |  | 58d? | 2013-12-26 | 2014-03-17 | 151 | 36d | 0d |  |  | 2648h |
| 153 | 1.6.6.1 | **Функциональное тестирование** |  | 38d? | 2013-12-26 | 2014-02-17 |  | 36d |  |  |  | 2024h |
| 154 | 1.6.6.1.1 | Подготовка ПМИ |  | 5d | 2013-12-26 | 2014-01-01 |  | 36d | 0d |  | Тест Аналитик | 40h |
| 155 | 1.6.6.1.2 | Разработка "сценариев тестирования" |  | 15d | 2013-12-26 | 2014-01-15 |  | 41d | 0d |  | Тест Аналитик | 120h |
| 156 | 1.6.6.1.3 | Разработка модели нагрузки для тестирования |  | 10d | 2014-01-02 | 2014-01-15 | 154 | 79d |  |  | Тест Аналитик | 80h |
| 157 | 1.6.6.1.4 | **Проведение тестирования** |  | 38d? | 2013-12-26 | 2014-02-17 |  | 41d |  |  |  | 1784h |
| 158 | 1.6.6.1.4.1 | **Подготовка среды тестирования** |  | 15d? | 2013-12-26 | 2014-01-15 |  | 41d |  |  |  | 200h |
| 159 | 1.6.6.1.4.1.1 | Разворачивание системы |  | 5d? | 2013-12-26 | 2014-01-01 |  | 41d | 0d |  | Java разработчик | 40h |
| 160 | 1.6.6.1.4.1.2 | Наполнение данными |  | 10d? | 2014-01-02 | 2014-01-15 | 159 | 41d | 0d |  | Java разработчик; Java разработчик6 | 160h |
| 161 | 1.6.6.1.4.2 | Среда тестирования готова | milestone | 0d | 2014-01-15 | 2014-01-15 | 155, 160 | 41d | 0d | finish no earlier than 2012-06-09 |  |  |
| 162 | 1.6.6.1.4.3 | Проведение тестирования |  | 10d | 2014-01-16 | 2014-01-29 | 161 | 41d | 0d |  | Тест Аналитик; Тестировщик [200%] | 240h |
| 163 | 1.6.6.1.4.4 | **Обработка результатов тестирования и внесение изменений в модуль** |  | 15d | 2014-01-28 | 2014-02-17 | 151, 162FS-2d | 41d |  |  |  | 1344h |
| 164 | 1.6.6.1.4.4.1 | Устранение замечаний по результатам функционального тестирования |  | 15d | 2014-01-28 | 2014-02-17 |  | 41d | 0d |  | Java разработчик5; Java разработчик [300%]; Валерий Мацукевич; Java разработчик3; Java разработчик4; Java разработчик2; Java разработчик1; Андрей Цветков | 1200h |
| 165 | 1.6.6.1.4.4.2 | Проверка устранения замечаний |  | 6d | 2014-02-10 | 2014-02-17 | 164FS-6d | 41d | 0d |  | Тест Аналитик; Тестировщик [200%] | 144h |
| 166 | 1.6.6.2 | **Нагрузочное тестирование** |  | 53d | 2014-01-02 | 2014-03-17 | 154 | 36d |  |  |  | 624h |
| 167 | 1.6.6.2.1 | Подготовка автоматизированных сценариев для создания нагрузки |  | 38d | 2014-01-02 | 2014-02-24 |  | 36d | 0d |  | Java разработчик | 304h |
| 168 | 1.6.6.2.2 | Стенд для нагрузочного тестирования подготовлен | milestone | 0d | 2014-01-29 | 2014-01-29 | 162 | 54d | 18d | finish no earlier than 2012-06-09 |  |  |
| 169 | 1.6.6.2.3 | Проведения нагрузочного тестирования |  | 10d | 2014-02-25 | 2014-03-10 | 165, 167, 168 | 36d | 0d |  | Java разработчик; Тест Аналитик; Тестировщик | 240h |
| 170 | 1.6.6.2.4 | Обработка результатов нагрузочного тестирования |  | 5d | 2014-03-11 | 2014-03-17 | 169 | 36d |  |  | Тест Аналитик; Тестировщик | 80h |
| 171 | 1.6.7 | Разработка модулей первой очереди завершена | milestone | 0d | 2014-03-17 | 2014-03-17 | 152 | 36d |  |  |  |  |
| 172 | 1.6.8 | **Подготовка документации** |  | 38d | 2013-12-26 | 2014-02-17 | 152SS | 56d |  |  |  | 160h |
| 173 | 1.6.8.1 | Разработка "Software Architecture Document" для модулей первой очереди |  | 20d | 2013-12-26 | 2014-01-22 |  | 74d | 18d |  | Технический писатель | 160h |
| 174 | 1.6.8.2 | Документы подготовлены | milestone | 0d | 2014-02-17 | 2014-02-17 | 165, 173 | 56d |  |  |  |  |
